How a schedule from MS Project changed from version to version. A marks actual dates.

## Version 1 (saved 2026-05-26, file E-2611027- 4JAR00XXXXP0001 - Cronograma de Proyecto - PMS CPF2 La CALERA RevA.mpp)

| ID | WBS | Task | Duration | Start | Finish | Predecessors | Complete | Total float | Constraint |
| --- | --- | --- | --- | --- | --- | --- | --- | --- | --- |
| 1 | 1 | **PMS CPF2 - LA CALERA- Cronograma Proyecto** | 254d | 2026-05-08 A | 2027-04-28 |  | 1% | 0d |  |
| 2 | 1.1 | **Inicio** | 21d | 2026-05-08 A | 2026-06-05 |  | 52% | 14d |  |
| 3 |  | Recepción / Aceptación OC | 2d | 2026-05-08 A | 2026-05-11 A |  | 100% |  | start no earlier than 2026-05-08 |
| 4 |  | Gestion Alta OC y Organización | 8d | 2026-05-12 A | 2026-05-21 A | 3 | 100% |  |  |
| 5 |  | Kick-Off | 1d | 2026-05-22 A | 2026-05-22 A | 4 | 100% |  |  |
| 6 |  | Planificación Detallada | 10d | 2026-05-25 | 2026-06-05 | 5 |  | 4d |  |
| 7 | 1.2 | **Hitos de Certificación** | 183d | 2026-07-17 | 2027-03-31 |  |  | 20d |  |
| 8 |  | Cert. Envío Ingeniería Basica (10%) | 0d | 2026-07-17 | 2026-07-17 | 21, 22, 25 |  | 188d | finish no earlier than 2022-12-12 |
| 9 |  | Cert. Aprobación Ingeniería Basica (10%) | 0d | 2026-08-14 | 2026-08-14 | 28 |  | 157d | finish no earlier than 2022-12-12 |
| 10 |  | Cert. Acopio de Materiales (25%) | 0d | 2026-11-05 | 2026-11-05 | 15 |  | 124d | finish no earlier than 2022-12-12 |
| 11 |  | Cert. FAT (20%) | 0d | 2027-01-29 | 2027-01-29 | 70, 66 |  | 63d |  |
| 12 |  | Cert. Entrega Equipamiento en Shelter (30%) | 0d | 2027-02-17 | 2027-02-17 | 72 |  | 50d |  |
| 13 |  | Cert. Entrega DataBook (5%) | 0d | 2027-03-31 | 2027-03-31 | 73 |  | 20d |  |
| 14 | 1.3 | **Actividades en Fábrica** | 194d | 2026-05-22 | 2027-02-17 |  |  | 0d |  |
| 15 | 1.3.1 | **Gestión Compra de Materiales** | 120d | 2026-05-22 | 2026-11-05 | 4 |  | 0d |  |
| 16 |  | Switches de Red | 120d | 2026-05-22 | 2026-11-05 | 4 |  | 114d |  |
| 17 |  | Material S800 - PMS | 100d | 2026-05-22 | 2026-10-08 | 4 |  | 0d |  |
| 18 |  | Tableros | 100d | 2026-05-22 | 2026-10-08 | 4 |  | 0d |  |
| 19 | 1.3.2 | **Desarrollo** | 139d | 2026-06-08 | 2026-12-17 |  |  | 14d |  |
| 20 | 1.3.2.1 | **Ingeniería - Documentación para Aprobación** | 40d | 2026-06-08 | 2026-07-31 |  |  | 14d |  |
| 21 |  | Arquitectura/Topilogía de Red | 10d | 2026-06-08 | 2026-06-19 | 6 |  | 4d |  |
| 22 |  | Listado de I/O | 20d | 2026-06-22 | 2026-07-17 | 21 |  | 4d |  |
| 23 |  | Listado de Variables por Comunicación | 30d | 2026-06-22 | 2026-07-31 | 21 |  | 29d |  |
| 24 |  | Especificación Funcional | 30d | 2026-06-22 | 2026-07-31 | 21 |  | 29d |  |
| 25 |  | Planos Constructivos Tableros | 25d | 2026-06-08 | 2026-07-10 | 6 |  | 14d |  |
| 26 |  | Procedimiento FAT | 10d | 2026-08-31 | 2026-09-11 | 24FS+20d |  | 123d |  |
| 27 |  | Procedimiento SAT | 10d | 2026-08-31 | 2026-09-11 | 24FS+20d |  | 123d |  |
| 28 | 1.3.2.4 | **Aprobación Ingeniería AESA** | 40d | 2026-06-22 | 2026-08-14 |  |  | 29d |  |
| 29 |  | Aprobación Arquitectura de Comunicación RevA | 10d | 2026-06-22 | 2026-07-03 | 21 |  | 142d | start no earlier than 2022-10-10 |
| 30 |  | Aprobación Listado de I/O RevA | 10d | 2026-07-20 | 2026-07-31 | 22 |  | 4d | start no earlier than 2022-10-14 |
| 31 |  | Aprobación Listado de Variables por Comunicación Rev A | 10d | 2026-08-03 | 2026-08-14 | 23 |  | 29d | start no earlier than 2022-10-14 |
| 32 |  | Aprobación Especificacion Funcional Rev A | 10d | 2026-08-03 | 2026-08-14 | 24 |  | 29d | start no earlier than 2022-10-14 |
| 33 |  | Aprobación Planos Constructivos Tableros RevA | 10d | 2026-07-13 | 2026-07-24 | 25 |  | 14d | start no earlier than 2022-10-14 |
| 34 |  | Aprobación Procedimiento FAT RevA | 10d | 2026-09-14 | 2026-09-25 | 26 |  | 123d | start no earlier than 2022-10-19 |
| 35 |  | Aprobación Procedimiento SAT RevA | 10d | 2026-09-14 | 2026-09-25 | 27 |  | 123d |  |
| 36 | 1.3.2.7 | **Corrección Ingeniería y Emisión en Rev 0 - ABB** | 40d | 2026-07-06 | 2026-08-28 |  |  | 29d |  |
| 37 |  | Arquitectura de Comunicación Rev0 | 10d | 2026-07-06 | 2026-07-17 | 29 |  | 142d |  |
| 38 |  | Listado de I/O Rev0 | 10d | 2026-08-03 | 2026-08-14 | 30 |  | 4d |  |
| 39 |  | Listado de Variables por Comunicación Rev0 | 10d | 2026-08-17 | 2026-08-28 | 31 |  | 29d |  |
| 40 |  | Revisión Especificacion Funcional Rev0 | 10d | 2026-08-17 | 2026-08-28 | 32 |  | 29d |  |
| 41 |  | Planos Constructivos Rev0 | 10d | 2026-07-27 | 2026-08-07 | 33 |  | 14d |  |
| 42 |  | Procedimiento FAT Rev0 | 10d | 2026-09-28 | 2026-10-09 | 34 |  | 123d |  |
| 43 |  | Procedimiento SAT Rev0 | 10d | 2026-09-28 | 2026-10-09 | 35 |  | 123d |  |
| 44 | 1.3.2.10 | **Aprobación Ingeniería AESA - Rev 0** | 40d | 2026-07-20 | 2026-09-11 |  |  | 29d |  |
| 45 |  | Aprobación Arquitectura de Comunicación Rev0 | 10d | 2026-07-20 | 2026-07-31 | 37 |  | 142d |  |
| 46 |  | Aprobación Listado de I/O Rev0 | 10d | 2026-08-17 | 2026-08-28 | 38 |  | 4d |  |
| 47 |  | Aprobación Listado de Variables por Comunicación Rev0 | 10d | 2026-08-31 | 2026-09-11 | 39 |  | 29d |  |
| 48 |  | Aprobación Revisión Especificacion Funcional Rev0 | 10d | 2026-08-31 | 2026-09-11 | 40 |  | 29d |  |
| 49 |  | Aprobación Planos Constructivos Rev0 | 10d | 2026-08-10 | 2026-08-21 | 41 |  | 14d |  |
| 50 |  | Aprobación Procedimiento FAT Rev0 | 10d | 2026-10-12 | 2026-10-23 | 42 |  | 123d |  |
| 51 |  | Aprobación Procedimiento SAT Rev0 | 10d | 2026-10-12 | 2026-10-23 | 43 |  | 123d |  |
| 52 |  | Pruebas Maqueta Integrada PMS/CCM/PCS (CPF1 y CPF2) | 4d | 2026-09-22 | 2026-09-25 | 21, 24 |  | 59d | start no earlier than 2026-09-22 |
| 53 | 1.3.2.14 | **Construcción** | 99d | 2026-08-03 | 2026-12-17 |  |  | 29d |  |
| 54 |  | Armado de Tableros | 70d | 2026-09-11 | 2026-12-17 | 49, 17FS-20d, 18FS-20d, 41 |  | 0d |  |
| 55 | 1.3.2.14.2 | **Configuración / Programación Sistema** | 85d | 2026-08-03 | 2026-11-27 |  |  | 34d |  |
| 56 |  | Creación de Entorno Virtual / Instalación del Sistema Virtual / Full Backups / Preparativos Entorno | 10d | 2026-08-03 | 2026-08-14 | 45, 37 |  | 142d |  |
| 57 |  | Configuración Pantallas y Ambiente de Operación | 15d | 2026-08-17 | 2026-09-04 | 29, 56 |  | 142d |  |
| 58 |  | Revisión Pantallas | 1d | 2026-09-07 | 2026-09-07 | 57 |  | 142d |  |
| 59 |  | Configuración Pantallas y Ambiente de Operación | 15d | 2026-09-08 | 2026-09-28 | 58 |  | 142d |  |
| 60 |  | Configuración I/O | 35d | 2026-08-31 | 2026-10-16 | 46, 38 |  | 4d |  |
| 61 |  | Configuarción Variables Comm (IEC61850, PROFI y MODBUS) | 30d | 2026-10-19 | 2026-11-27 | 47, 60, 39 |  | 4d |  |
| 62 |  | Configuración Lógicas Sistema | 30d | 2026-10-19 | 2026-11-27 | 48, 60, 40 |  | 4d |  |
| 63 | 1.3.3 | **Pruebas** | 34d | 2026-12-18 | 2027-02-03 |  |  | 0d |  |
| 64 | 1.3.3.1 | **Pruebas Tableros** | 34d | 2026-12-18 | 2027-02-03 |  |  | 0d |  |
| 65 |  | Pruebas Internas Tableros | 15d | 2026-12-18 | 2027-01-07 | 61, 62, 60, 54, 52 |  | 0d | start no earlier than 2022-12-26 |
| 66 |  | FAT Tableros | 5d | 2027-01-25 | 2027-01-29 | 65FS+11d |  | 0d |  |
| 67 |  | Ajustes FAT Tableros | 3d | 2027-02-01 | 2027-02-03 | 66 |  | 0d |  |
| 68 | 1.3.3.2 | **Pruebas Sistema** | 34d | 2026-12-18 | 2027-02-03 |  |  | 0d |  |
| 69 |  | Pruebas Internas Sistema | 15d | 2026-12-18 | 2027-01-07 | 61, 62, 54, 52 |  | 0d |  |
| 70 |  | FAT Sistema | 5d | 2027-01-25 | 2027-01-29 | 69FS+11d |  | 0d |  |

| ID | WBS | Task | Duration | Start | Finish | Predecessors | Total float |
| --- | --- | --- | --- | --- | --- | --- | --- |
| 71 |  | Ajustes FAT Sistema | 3d | 2027-02-01 | 2027-02-03 | 70 | 0d |
| 72 |  | Despachos | 10d | 2027-02-04 | 2027-02-17 | 67, 71 | 0d |
| 73 | 1.4 | **Actividades en Shelter** | 30d | 2027-02-18 | 2027-03-31 |  | 0d |
| 74 |  | Montaje y Conexionado OK (estimado) | 20d | 2027-02-18 | 2027-03-17 | 72 | 0d |
| 75 |  | Supervisión Montajes y Preparativos FAT Imtegral | 5d | 2027-03-18 | 2027-03-24 | 74, 72 | 0d |
| 76 |  | FAT INTEGRAL (SHELTER) | 5d | 2027-03-25 | 2027-03-31 | 75 | 0d |
| 77 |  | Entrega Data Book (CAF) | 20d | 2027-04-01 | 2027-04-28 | 73 | 0d |

## Version 2 (saved 2026-07-24, file 5155-00-0007-VE-CO-PG-001_REV B.mpp)

Last finish stays 2027-04-28. Complete tasks 3 → 7.

Changed:

| ID | Task | Start | Finish | Duration | Complete | Total float | Predecessors |
| --- | --- | --- | --- | --- | --- | --- | --- |
| 1 | **PMS CPF2 - LA CALERA- Cronograma Proyecto** |  |  |  | 1% → 34% |  |  |
| 2 | **Inicio** |  | 2026-06-05 A |  | 52% → 100% | 14d → none |  |
| 6 | Planificación Detallada | 2026-05-25 A | 2026-06-05 A |  | 0% → 100% | 4d → none |  |
| 7 | **Hitos de Certificación** | 2026-07-17 → 2026-07-31 (+14d) |  | 183d → 173d |  |  |  |
| 8 | Cert. Envío Ingeniería Basica (10%) | 2026-07-17 → 2026-07-31 (+14d) | 2026-07-17 → 2026-07-31 (+14d) |  |  | 188d → 193d | 21, 22, 25 → 21, 25, 24 |
| 14 | **Actividades en Fábrica** | 2026-05-22 A |  |  | 0% → 35% | 0d → 50d |  |
| 15 | **Gestión Compra de Materiales** | 2026-05-22 A |  |  | 0% → 66% | 0d → 124d |  |
| 16 | Switches de Red | 2026-05-22 A |  |  | 0% → 50% | 114d → 124d |  |
| 17 | Material S800 - PMS | 2026-05-22 A | 2026-10-08 A |  | 0% → 100% | 0d → none |  |
| 18 | Tableros | 2026-05-22 A |  |  | 0% → 50% |  |  |
| 19 | **Desarrollo** | 2026-06-08 A |  |  | 0% → 21% | 14d → 94d |  |
| 20 | **Ingeniería - Documentación para Aprobación** | 2026-06-08 A |  |  | 0% → 81% | 14d → 39d |  |
| 21 | Arquitectura/Topilogía de Red | 2026-06-08 A | 2026-06-19 → 2026-07-03 A (+14d) | 10d → 20d | 0% → 100% | 4d → none |  |
| 22 | Listado de I/O | 2026-06-22 A | 2026-07-17 → 2026-07-31 (+14d) | 20d → 30d | 0% → 80% |  | 21 → 21FS-10d |
| 23 | Listado de Variables por Comunicación | 2026-06-22 A |  |  | 0% → 80% | 29d → 39d | 21 → 21FS-10d |
| 24 | Especificación Funcional | 2026-06-22 A |  |  | 0% → 80% | 29d → 39d | 21 → 21FS-10d |
| 25 | Planos Constructivos Tableros | 2026-06-08 A |  |  | 0% → 70% |  |  |
| 28 | **Aprobación Ingeniería AESA** | 2026-06-22 → 2026-07-06 A (+14d) |  | 40d → 30d | 0% → 20% | 29d → 39d |  |
| 29 | Aprobación Arquitectura de Comunicación RevA | 2026-06-22 → 2026-07-06 A (+14d) | 2026-07-03 → 2026-07-17 A (+14d) |  | 0% → 100% | 142d → none |  |
| 30 | Aprobación Listado de I/O RevA | 2026-07-20 → 2026-08-03 (+14d) | 2026-07-31 → 2026-08-14 (+14d) |  |  |  |  |
| 36 | **Corrección Ingeniería y Emisión en Rev 0 - ABB** | 2026-07-06 → 2026-07-20 (+14d) |  | 40d → 30d |  | 29d → 19d |  |
| 37 | Arquitectura de Comunicación Rev0 | 2026-07-06 → 2026-07-20 (+14d) | 2026-07-17 → 2026-07-31 (+14d) |  |  |  |  |
| 38 | Listado de I/O Rev0 | 2026-08-03 → 2026-08-17 (+14d) | 2026-08-14 → 2026-08-28 (+14d) |  |  |  |  |
| 44 | **Aprobación Ingeniería AESA - Rev 0** | 2026-07-20 → 2026-08-03 (+14d) |  | 40d → 30d |  | 29d → 19d |  |
| 45 | Aprobación Arquitectura de Comunicación Rev0 | 2026-07-20 → 2026-08-03 (+14d) | 2026-07-31 → 2026-08-14 (+14d) |  |  |  |  |
| 46 | Aprobación Listado de I/O Rev0 | 2026-08-17 → 2026-08-31 (+14d) | 2026-08-28 → 2026-09-11 (+14d) |  |  |  |  |
| 53 | **Construcción** | 2026-08-03 → 2026-08-17 (+14d) |  | 99d → 89d |  | 29d → 19d |  |
| 55 | **Configuración / Programación Sistema** | 2026-08-03 → 2026-08-17 (+14d) | 2026-11-27 → 2026-12-11 (+14d) |  |  | 34d → 24d |  |
| 56 | Creación de Entorno Virtual / Instalación del Sistema Virtual / Full Backups / Preparativos Entorno | 2026-08-03 → 2026-08-17 (+14d) | 2026-08-14 → 2026-08-28 (+14d) |  |  |  |  |
| 57 | Configuración Pantallas y Ambiente de Operación | 2026-08-17 → 2026-08-31 (+14d) | 2026-09-04 → 2026-09-18 (+14d) |  |  |  |  |
| 58 | Revisión Pantallas | 2026-09-07 → 2026-09-21 (+14d) | 2026-09-07 → 2026-09-21 (+14d) |  |  |  |  |
| 59 | Configuración Pantallas y Ambiente de Operación | 2026-09-08 → 2026-09-22 (+14d) | 2026-09-28 → 2026-10-12 (+14d) |  |  |  |  |
| 60 | Configuración I/O | 2026-08-31 → 2026-09-14 (+14d) | 2026-10-16 → 2026-10-30 (+14d) |  |  |  |  |
| 61 | Configuarción Variables Comm (IEC61850, PROFI y MODBUS) | 2026-10-19 → 2026-11-02 (+14d) | 2026-11-27 → 2026-12-11 (+14d) |  |  |  |  |
| 62 | Configuración Lógicas Sistema | 2026-10-19 → 2026-11-02 (+14d) | 2026-11-27 → 2026-12-11 (+14d) |  |  |  |  |
